# Cronograma de actividades del proyecto (Diagrama de Gantt)

How a schedule from MS Project XML changed from version to version. A marks actual dates.

## Version 1 (saved 2026-11-02)

Note of the change: Reestructura cronograma y plan de instalación: fases separadas y una sola sucesora por tarea

| ID | WBS | Task | Duration | Start | Finish | Predecessors | Constraint |
| --- | --- | --- | --- | --- | --- | --- | --- |
| 1 | 1 | **I: Análisis** | 15d | 2026-02-09 | 2026-02-27 |  |  |
| 2 | 1.1 | **1.1 Análisis de requerimientos** | 15d | 2026-02-09 | 2026-02-27 |  |  |
| 3 |  | 1.1.1 Diagnóstico de la comunidad y levantamiento de información | 7d | 2026-02-09 | 2026-02-17 |  |  |
| 4 |  | 1.1.2 Definición de requerimientos | 7d | 2026-02-19 | 2026-02-27 | 3FS+1d |  |
| 5 | 2 | **II: Factibilidad** | 5d | 2026-03-02 | 2026-03-06 |  |  |
| 6 | 2.1 | **2.1 Estudio de factibilidad** | 5d | 2026-03-02 | 2026-03-06 |  |  |
| 7 |  | 2.1.1 Factibilidad técnica, económica y operativa | 5d | 2026-03-02 | 2026-03-06 | 4 |  |
| 8 | 3 | **III: Diseño y modelado** | 30d | 2026-03-09 | 2026-04-17 |  |  |
| 9 | 3.1 | **3.1 Modelado del sistema** | 20d | 2026-03-09 | 2026-04-03 |  |  |
| 10 |  | 3.1.1 Casos de uso | 10d | 2026-03-09 | 2026-03-20 | 7 |  |
| 11 |  | 3.1.2 Modelo de datos | 10d | 2026-03-23 | 2026-04-03 | 10 |  |
| 12 | 3.2 | **3.2 Diseño de interfaz** | 10d | 2026-04-06 | 2026-04-17 |  |  |
| 13 |  | 3.2.1 Diseño lógico | 10d | 2026-04-06 | 2026-04-17 | 11 |  |
| 14 | 4 | **IV: Desarrollo e implementación** | 98d | 2026-04-20 | 2026-09-02 |  |  |
| 15 | 4.1 | **4.1 Configuración del entorno** | 15d | 2026-04-20 | 2026-05-08 |  |  |
| 16 |  | 4.1.1 Configuración del entorno de desarrollo | 5d | 2026-04-20 | 2026-04-24 | 13 |  |
| 17 |  | 4.1.2 Módulo de inicio de sesión | 10d | 2026-04-27 | 2026-05-08 | 16 |  |
| 18 | 4.2 | **4.2 Módulos del sistema** | 83d | 2026-05-11 | 2026-09-02 |  |  |
| 19 |  | 4.2.1 Módulo de marcación | 20d | 2026-05-11 | 2026-06-05 | 17 |  |
| 20 |  | 4.2.2 Módulo de empleados | 20d | 2026-06-08 | 2026-07-03 | 19 |  |
| 21 |  | 4.2.3 Módulo de asistencia | 30d | 2026-06-22 | 2026-07-31 | 20SS+10d |  |
| 22 |  | 4.2.4 Módulo de pagos | 57d | 2026-05-11 | 2026-07-28 |  | start no earlier than 2026-05-11 |
| 23 |  | 4.2.5 Módulo de conceptos | 25d | 2026-05-11 | 2026-06-12 |  | start no earlier than 2026-05-11 |
| 24 |  | 4.2.6 Módulo de liquidaciones | 25d | 2026-06-15 | 2026-07-17 | 23 |  |
| 25 |  | 4.2.7 Módulo de reportes | 23d | 2026-08-03 | 2026-09-02 | 21, 22, 24 |  |
| 26 | 5 | **V: Pruebas, instalación e implantación y evaluación** | 74d | 2026-09-03 | 2026-12-15 |  |  |
| 27 | 5.1 | **5.1 Pruebas** | 20d | 2026-09-03 | 2026-09-30 |  |  |
| 28 |  | 5.1.1 Pruebas unitarias | 20d | 2026-09-03 | 2026-09-30 | 25 |  |
| 29 | 5.2 | **5.2 Instalación** | 20d | 2026-10-02 | 2026-10-29 |  |  |
| 30 |  | 5.2.1 Preparación y verificación | 3d | 2026-10-02 | 2026-10-06 | 28FS+1d |  |
| 31 |  | 5.2.2 Instalación de software base | 5d | 2026-10-07 | 2026-10-13 | 30 |  |
| 32 |  | 5.2.3 Despliegue del sistema | 4d | 2026-10-14 | 2026-10-19 | 31 |  |
| 33 |  | 5.2.4 Pruebas de configuración de la instalación | 8d | 2026-10-20 | 2026-10-29 | 32 |  |
| 34 | 5.3 | **5.3 Implantación, aceptación y capacitación** | 31d | 2026-10-30 | 2026-12-11 |  |  |
| 35 |  | 5.3.1 Preparación del proyecto | 1d | 2026-10-30 | 2026-10-30 | 33 |  |
| 36 |  | 5.3.2 Acondicionamiento de instalaciones | 3d | 2026-11-02 | 2026-11-04 | 35 |  |
| 37 |  | 5.3.3 Pruebas | 5d | 2026-11-05 | 2026-11-11 | 36 |  |
| 38 |  | 5.3.4 Capacitación del personal | 5d | 2026-11-12 | 2026-11-18 | 37 |  |
| 39 | 5.3.5 | **5.3.5 Puesta en marcha** | 17d | 2026-11-19 | 2026-12-11 |  |  |
| 40 |  | 5.3.5.1 Operación paralela del sistema con el sistema manual (15 días) | 15d | 2026-11-19 | 2026-12-09 | 38 |  |
| 41 |  | 5.3.5.2 Análisis de resultados y corrección de errores | 1d | 2026-12-10 | 2026-12-10 | 40 |  |
| 42 |  | 5.3.5.3 Arranque del sistema | 1d | 2026-12-11 | 2026-12-11 | 41 |  |
| 43 | 5.4 | **5.4 Evaluación** | 2d | 2026-12-14 | 2026-12-15 |  |  |
| 44 |  | 5.4.1 Evaluación | 2d | 2026-12-14 | 2026-12-15 | 42 |  |

## Version 2 (saved 2026-11-02)

Note of the change: Cronograma: asistencia en FC, factibilidad con más tareas y fin el 27/11; plan con CC en cadena

Last finish 2026-12-15 → 2026-11-27 (-18d).

Added:

| ID | Task | Duration | Start | Finish | Predecessors | Resources |
| --- | --- | --- | --- | --- | --- | --- |
| 8 | 2.1.2 Factibilidad económica | 3d | 2026-03-02 | 2026-03-04 | 7SS | Gabriel Aguilar |
| 9 | 2.1.3 Factibilidad operativa | 3d | 2026-03-02 | 2026-03-04 | 8SS | Rosmel Briceño |
| 10 | 2.1.4 Análisis de riesgos y alternativas | 1d | 2026-03-05 | 2026-03-05 | 9 | Anthony Escobar; Gabriel Aguilar |
| 11 | 2.1.5 Informe y conclusiones de factibilidad | 1d | 2026-03-06 | 2026-03-06 | 10 | Anthony Escobar; Gabriel Aguilar |

Changed:

| ID | Task | Start | Finish | Duration | Predecessors | Other |
| --- | --- | --- | --- | --- | --- | --- |
| 7 | 2.1.1 Factibilidad técnica |  | 2026-03-06 → 2026-03-04 (-2d) | 5d → 3d |  | was named 2.1.1 Factibilidad técnica, económica y operativa; resources Anthony Escobar; Gabriel Aguilar → Anthony Escobar |
| 14 | 3.1.1 Casos de uso |  |  |  | 7 → 11 |  |
| 18 | **IV: Desarrollo e implementación** |  | 2026-09-02 → 2026-09-16 (+14d) | 98d → 108d |  |  |
| 22 | **4.2 Módulos del sistema** |  | 2026-09-02 → 2026-09-16 (+14d) | 83d → 93d |  |  |
| 25 | 4.2.3 Módulo de asistencia | 2026-06-22 → 2026-07-06 (+14d) | 2026-07-31 → 2026-08-14 (+14d) |  | 24SS+10d → 24 |  |
| 29 | 4.2.7 Módulo de reportes | 2026-08-03 → 2026-08-17 (+14d) | 2026-09-02 → 2026-09-16 (+14d) |  |  |  |
| 30 | **V: Pruebas, instalación e implantación y evaluación** | 2026-09-03 → 2026-09-02 (-1d) | 2026-12-15 → 2026-11-27 (-18d) | 74d → 63d |  |  |
| 31 | **5.1 Pruebas** | 2026-09-03 → 2026-09-02 (-1d) | 2026-09-30 → 2026-09-29 (-1d) |  |  |  |
| 32 | 5.1.1 Pruebas unitarias | 2026-09-03 → 2026-09-02 (-1d) | 2026-09-30 → 2026-09-29 (-1d) |  | 29 → 29SS+12d |  |
| 33 | **5.2 Instalación** | 2026-10-02 → 2026-10-01 (-1d) | 2026-10-29 → 2026-10-23 (-6d) | 20d → 17d |  |  |
| 34 | 5.2.1 Preparación y verificación | 2026-10-02 → 2026-10-01 (-1d) | 2026-10-06 → 2026-10-05 (-1d) |  |  |  |
| 35 | 5.2.2 Instalación de software base | 2026-10-07 → 2026-10-06 (-1d) | 2026-10-13 → 2026-10-07 (-6d) | 5d → 2d |  |  |
| 36 | 5.2.3 Despliegue del sistema | 2026-10-14 → 2026-10-08 (-6d) | 2026-10-19 → 2026-10-13 (-6d) |  |  |  |
| 37 | 5.2.4 Pruebas de configuración de la instalación | 2026-10-20 → 2026-10-14 (-6d) | 2026-10-29 → 2026-10-23 (-6d) |  |  |  |
| 38 | **5.3 Implantación, aceptación y capacitación** | 2026-10-30 → 2026-10-26 (-4d) | 2026-12-11 → 2026-11-25 (-16d) | 31d → 23d |  |  |
| 39 | 5.3.1 Preparación del proyecto | 2026-10-30 → 2026-10-26 (-4d) | 2026-10-30 → 2026-10-26 (-4d) |  |  |  |
| 40 | 5.3.2 Acondicionamiento de instalaciones | 2026-11-02 → 2026-10-27 (-6d) | 2026-11-04 → 2026-10-29 (-6d) |  |  |  |
| 41 | 5.3.3 Pruebas | 2026-11-05 → 2026-10-27 (-9d) | 2026-11-11 → 2026-11-02 (-9d) |  | 40 → 40SS |  |
| 42 | 5.3.4 Capacitación del personal | 2026-11-12 → 2026-10-27 (-16d) | 2026-11-18 → 2026-11-02 (-16d) |  | 41 → 41SS |  |
| 43 | **5.3.5 Puesta en marcha** | 2026-11-19 → 2026-11-03 (-16d) | 2026-12-11 → 2026-11-25 (-16d) |  |  |  |
| 44 | 5.3.5.1 Operación paralela del sistema con el sistema manual (15 días) | 2026-11-19 → 2026-11-03 (-16d) | 2026-12-09 → 2026-11-23 (-16d) |  |  |  |
| 45 | 5.3.5.2 Análisis de resultados y corrección de errores | 2026-12-10 → 2026-11-24 (-16d) | 2026-12-10 → 2026-11-24 (-16d) |  |  |  |
| 46 | 5.3.5.3 Arranque del sistema | 2026-12-11 → 2026-11-25 (-16d) | 2026-12-11 → 2026-11-25 (-16d) |  |  |  |
| 47 | **5.4 Evaluación** | 2026-12-14 → 2026-11-26 (-18d) | 2026-12-15 → 2026-11-27 (-18d) |  |  |  |
| 48 | 5.4.1 Evaluación | 2026-12-14 → 2026-11-26 (-18d) | 2026-12-15 → 2026-11-27 (-18d) |  |  |  |

## Version 3 (saved 2026-11-02)

Note of the change: Cronograma: reparte 5.3.3 y 5.3.4 para que Samuel no tenga tres tareas a la vez

Last finish stays 2026-11-27.

Changed:

| ID | Task | Other |
| --- | --- | --- |
| 41 | 5.3.3 Pruebas | resources Samuel Loyo → Gabriel Aguilar |
| 42 | 5.3.4 Capacitación del personal | resources Samuel Loyo → Rosmel Briceño |

## Version 4 (saved 2026-11-02)

Note of the change: Agrega hitos al cronograma y al plan; Samuel único recurso después de los módulos

Last finish stays 2026-11-27.

Added:

| ID | Task | Duration | Start | Finish | Predecessors |
| --- | --- | --- | --- | --- | --- |
| 5 | Hito 1: Requerimientos definidos | 0d | 2026-02-27 | 2026-02-27 | 4 |
| 13 | Hito 2: Factibilidad aprobada | 0d | 2026-03-06 | 2026-03-06 | 12 |
| 20 | Hito 3: Diseño del sistema aprobado | 0d | 2026-04-17 | 2026-04-17 | 19 |
| 25 | Hito 4: Entorno de desarrollo y módulo de acceso listos | 0d | 2026-05-08 | 2026-05-08 | 24 |
| 37 | Hito 5: Pruebas unitarias aprobadas | 0d | 2026-09-29 | 2026-09-29 | 36 |
| 43 | Hito 6: Sistema instalado | 0d | 2026-10-23 | 2026-10-23 | 42 |
| 49 | Hito 7: Pruebas y capacitación completadas | 0d | 2026-11-02 | 2026-11-02 | 48 |
| 54 | Hito 8: Sistema en producción | 0d | 2026-11-25 | 2026-11-25 | 53 |
| 57 | Hito 9: Fin del proyecto | 0d | 2026-11-27 | 2026-11-27 | 56 |

Changed:

| ID | Task | Predecessors | Other |
| --- | --- | --- | --- |
| 8 | 2.1.1 Factibilidad técnica | 4 → 5 |  |
| 16 | 3.1.1 Casos de uso | 12 → 13 |  |
| 23 | 4.1.1 Configuración del entorno de desarrollo | 19 → 20 |  |
| 27 | 4.2.1 Módulo de marcación | 24 → 25 |  |
| 39 | 5.2.1 Preparación y verificación | 36FS+1d → 37FS+1d |  |
| 45 | 5.3.1 Preparación del proyecto | 42 → 43 |  |
| 47 | 5.3.3 Pruebas |  | resources Gabriel Aguilar → Samuel Loyo |
| 48 | 5.3.4 Capacitación del personal |  | resources Rosmel Briceño → Samuel Loyo |
| 51 | 5.3.5.1 Operación paralela del sistema con el sistema manual (15 días) | 48 → 49 |  |
| 56 | 5.4.1 Evaluación | 53 → 54 |  |

## Version 5 (saved 2026-11-02)

Note of the change: Concordancia cronograma, planes e informe: Meta del Proyecto, fases RUP, hitos y fechas actualizadas

Last finish stays 2026-11-27.

Added:

| ID | Task | Duration | Start | Finish |
| --- | --- | --- | --- | --- |
| 2 | **I: Análisis (RUP: Inicio)** | 15d | 2026-02-09 | 2026-02-27 |
| 7 | **II: Factibilidad (RUP: Inicio)** | 5d | 2026-03-02 | 2026-03-06 |
| 15 | **III: Diseño y modelado (RUP: Elaboración)** | 30d | 2026-03-09 | 2026-04-17 |
| 22 | **IV: Desarrollo e implementación (RUP: Construcción)** | 108d | 2026-04-20 | 2026-09-16 |
| 35 | **V: Pruebas, instalación e implantación y evaluación (RUP: Transición)** | 63d | 2026-09-02 | 2026-11-27 |

Removed: 6 II: Factibilidad; 14 III: Diseño y modelado; 21 IV: Desarrollo e implementación; 34 V: Pruebas, instalación e implantación y evaluación

Changed:

| ID | Task | Finish | Duration | Other |
| --- | --- | --- | --- | --- |
| 1 | **Meta del Proyecto** | 2026-02-27 → 2026-11-27 (+273d) | 15d → 210d | was named I: Análisis |

## Version 6 (saved 2026-11-03)

Note of the change: Cronograma en 4 fases RUP, anexos, casos de prueba sin módulos funcionales y asistencia sin biométrico

Last finish stays 2026-11-27.

Removed: 7 II: Factibilidad (RUP: Inicio)

Changed:

| ID | Task | Finish | Duration | Other |
| --- | --- | --- | --- | --- |
| 2 | **I: Inicio** | 2026-02-27 → 2026-03-06 (+7d) | 15d → 20d | was named I: Análisis (RUP: Inicio) |
| 7 | **1.2 Estudio de factibilidad** |  |  | was named 2.1 Estudio de factibilidad |
| 8 | 1.2.1 Factibilidad técnica |  |  | was named 2.1.1 Factibilidad técnica |
| 9 | 1.2.2 Factibilidad económica |  |  | was named 2.1.2 Factibilidad económica |
| 10 | 1.2.3 Factibilidad operativa |  |  | was named 2.1.3 Factibilidad operativa |
| 11 | 1.2.4 Análisis de riesgos y alternativas |  |  | was named 2.1.4 Análisis de riesgos y alternativas |
| 12 | 1.2.5 Informe y conclusiones de factibilidad |  |  | was named 2.1.5 Informe y conclusiones de factibilidad |
| 14 | **II: Elaboración** |  |  | was named III: Diseño y modelado (RUP: Elaboración) |
| 15 | **2.1 Modelado del sistema** |  |  | was named 3.1 Modelado del sistema |
| 16 | 2.1.1 Casos de uso |  |  | was named 3.1.1 Casos de uso |
| 17 | 2.1.2 Modelo de datos |  |  | was named 3.1.2 Modelo de datos |
| 18 | **2.2 Diseño de interfaz** |  |  | was named 3.2 Diseño de interfaz |
| 19 | 2.2.1 Diseño lógico |  |  | was named 3.2.1 Diseño lógico |
| 21 | **III: Construcción** |  |  | was named IV: Desarrollo e implementación (RUP: Construcción) |
| 22 | **3.1 Configuración del entorno** |  |  | was named 4.1 Configuración del entorno |
| 23 | 3.1.1 Configuración del entorno de desarrollo |  |  | was named 4.1.1 Configuración del entorno de desarrollo |
| 24 | 3.1.2 Módulo de inicio de sesión |  |  | was named 4.1.2 Módulo de inicio de sesión |
| 26 | **3.2 Módulos del sistema** |  |  | was named 4.2 Módulos del sistema |
| 27 | 3.2.1 Módulo de marcación |  |  | was named 4.2.1 Módulo de marcación |
| 28 | 3.2.2 Módulo de empleados |  |  | was named 4.2.2 Módulo de empleados |
| 29 | 3.2.3 Módulo de asistencia |  |  | was named 4.2.3 Módulo de asistencia |
| 30 | 3.2.4 Módulo de pagos |  |  | was named 4.2.4 Módulo de pagos |
| 31 | 3.2.5 Módulo de conceptos |  |  | was named 4.2.5 Módulo de conceptos |
| 32 | 3.2.6 Módulo de liquidaciones |  |  | was named 4.2.6 Módulo de liquidaciones |
| 33 | 3.2.7 Módulo de reportes |  |  | was named 4.2.7 Módulo de reportes |
| 34 | **IV: Transición** |  |  | was named V: Pruebas, instalación e implantación y evaluación (RUP: Transición) |
| 35 | **4.1 Pruebas** |  |  | was named 5.1 Pruebas |
| 36 | 4.1.1 Pruebas unitarias |  |  | was named 5.1.1 Pruebas unitarias |
| 38 | **4.2 Instalación** |  |  | was named 5.2 Instalación |
| 39 | 4.2.1 Preparación y verificación |  |  | was named 5.2.1 Preparación y verificación |
| 40 | 4.2.2 Instalación de software base |  |  | was named 5.2.2 Instalación de software base |
| 41 | 4.2.3 Despliegue del sistema |  |  | was named 5.2.3 Despliegue del sistema |
| 42 | 4.2.4 Pruebas de configuración de la instalación |  |  | was named 5.2.4 Pruebas de configuración de la instalación |
| 44 | **4.3 Implantación, aceptación y capacitación** |  |  | was named 5.3 Implantación, aceptación y capacitación |
| 45 | 4.3.1 Preparación del proyecto |  |  | was named 5.3.1 Preparación del proyecto |
| 46 | 4.3.2 Acondicionamiento de instalaciones |  |  | was named 5.3.2 Acondicionamiento de instalaciones |
| 47 | 4.3.3 Pruebas |  |  | was named 5.3.3 Pruebas |
| 48 | 4.3.4 Capacitación del personal |  |  | was named 5.3.4 Capacitación del personal |
| 50 | **4.3.5 Puesta en marcha** |  |  | was named 5.3.5 Puesta en marcha |
| 51 | 4.3.5.1 Operación paralela del sistema con el sistema manual (15 días) |  |  | was named 5.3.5.1 Operación paralela del sistema con el sistema manual (15 días) |
| 52 | 4.3.5.2 Análisis de resultados y corrección de errores |  |  | was named 5.3.5.2 Análisis de resultados y corrección de errores |
| 53 | 4.3.5.3 Arranque del sistema |  |  | was named 5.3.5.3 Arranque del sistema |
| 55 | **4.4 Evaluación** |  |  | was named 5.4 Evaluación |
| 56 | 4.4.1 Evaluación |  |  | was named 5.4.1 Evaluación |

## Version 7 (saved 2026-11-09)

Note of the change: Ajusta predecesores: módulos con un predecesor FS cada uno, pruebas unitarias FC en lugar de CC

Last finish stays 2026-11-27.

Changed:

| ID | Task | Predecessors |
| --- | --- | --- |
| 28 | 3.2.2 Módulo de empleados | 27 → 25 |
| 30 | 3.2.4 Módulo de pagos | none → 29 |
| 31 | 3.2.5 Módulo de conceptos | none → 28 |
| 32 | 3.2.6 Módulo de liquidaciones | 31 → 30 |
| 33 | 3.2.7 Módulo de reportes | 29, 30, 32 → 32 |
| 36 | 4.1.1 Pruebas unitarias | 33SS+12d → 33FS+12d |
